# Team2_ganttchart

How a schedule from MS Project changed from version to version. A marks actual dates.

## Version 1 (saved 2022-03-29, file 11 GanttChart_Baseline.mpp)

| ID | WBS | Task | Duration | Start | Finish | Predecessors | Total float | Constraint |
| --- | --- | --- | --- | --- | --- | --- | --- | --- |
| 1 | 1 | **Received data** | 18d | 2022-04-01 | 2022-04-26 |  |  |  |
| 2 | 1.1 | **Signed NDA** | 5d | 2022-04-01 | 2022-04-07 |  | 0d |  |
| 3 |  | Team Members sign & submit | 2d | 2022-04-01 | 2022-04-04 |  | 0d |  |
| 4 |  | Sponsor Approves NDAs | 1d | 2022-04-05 | 2022-04-05 | 3 | 0d |  |
| 5 |  | Data Released to Team | 2d | 2022-04-06 | 2022-04-07 | 4 | 0d | start no earlier than 2022-04-06 |
| 6 | 1.2 | **Collected Data** | 6d | 2022-04-08 | 2022-04-15 |  | 0d |  |
| 7 |  | Create Extraction Tool | 3d | 2022-04-08 | 2022-04-12 | 5 | 212d |  |
| 8 |  | Creat Data Depository | 2d | 2022-04-08 | 2022-04-11 | 5 | 213d |  |
| 9 |  | Sort Released Data | 2d | 2022-04-08 | 2022-04-11 | 5 | 0d |  |
| 10 |  | Evaluate Data Dictionary | 3d | 2022-04-12 | 2022-04-14 | 9 | 0d |  |
| 11 |  | Create Data Backup | 1d | 2022-04-15 | 2022-04-15 | 10 | 0d |  |
| 12 | 1.3 | **Created data dictionary** | 5d | 2022-04-18 | 2022-04-22 |  |  |  |
| 13 |  | Interpret Data | 4d | 2022-04-18 | 2022-04-21 | 11 | 0d |  |
| 14 |  | Resolve questions with UCONNIC | 3d | 2022-04-18 | 2022-04-20 | 11 | 1d |  |
| 15 |  | Review Dictionary with Team | 1d | 2022-04-22 | 2022-04-22 | 13, 14 | 0d |  |
| 16 | 2 | **Cleaned data** | 33d | 2022-04-25 | 2022-06-08 |  | 0d |  |
| 17 | 2.1 | **Pre-processed data** | 22d | 2022-04-25 | 2022-05-24 |  | 0d |  |
| 18 |  | Format Data | 3d | 2022-04-25 | 2022-04-27 | 15 | 0d |  |
| 19 |  | Review Data Dictionary | 2d | 2022-04-28 | 2022-04-29 | 18 | 0d |  |
| 20 |  | Clean file for irrelevant data | 2d | 2022-05-02 | 2022-05-03 | 19 | 0d |  |
| 21 |  | Input missing data | 3d | 2022-05-04 | 2022-05-06 | 20 | 0d |  |
| 22 |  | Exclude outliers | 3d | 2022-05-09 | 2022-05-11 | 21 | 0d |  |
| 23 |  | Discussion data questions with UCONNIC | 3d | 2022-05-12 | 2022-05-16 | 22 | 0d |  |
| 24 |  | Adjust data as necessary | 3d | 2022-05-17 | 2022-05-19 | 23 | 0d |  |
| 25 |  | Final data review with UCONNIC | 3d | 2022-05-20 | 2022-05-24 | 24 | 0d |  |
| 26 | 2.2 | **Data Transformation** | 3d | 2022-05-25 | 2022-05-27 |  | 0d |  |
| 27 |  | Normalization | 2d | 2022-05-25 | 2022-05-26 | 25 | 0d |  |
| 28 |  | Make data adjustments | 1d | 2022-05-27 | 2022-05-27 | 27 | 0d |  |
| 29 | 2.3 | **Data Visualization** | 8d | 2022-05-30 | 2022-06-08 |  | 0d |  |
| 30 |  | Data exploration | 5d | 2022-05-30 | 2022-06-03 | 28 | 0d |  |
| 31 |  | Analyze data with visualization tools | 3d | 2022-05-30 | 2022-06-01 | 28 | 2d |  |
| 32 |  | Extract key infoermation | 3d | 2022-05-30 | 2022-06-01 | 28 | 2d |  |
| 33 |  | Consult with UCONNIC | 3d | 2022-06-06 | 2022-06-08 | 32, 30, 31 | 0d | start no earlier than 2022-06-02 |
| 34 | 3 | **Finished Model** | 127d | 2022-06-09 | 2022-12-06 |  | 0d |  |
| 35 | 3.1 | **Developed optical character recognition system** | 17d | 2022-06-09 | 2022-07-01 |  | 154d |  |
| 36 |  | OCR system created | 7d | 2022-06-09 | 2022-06-17 | 33 | 154d |  |
| 37 |  | OCR system tested | 5d | 2022-06-20 | 2022-06-24 | 36 | 154d |  |
| 38 |  | OCR system finalized | 5d | 2022-06-27 | 2022-07-01 | 37 | 154d |  |
| 39 | 3.2 | **Developed natural language processing system** | 20d | 2022-06-09 | 2022-07-07 |  | 0d |  |
| 40 |  | NLP system created | 10d | 2022-06-09 | 2022-06-22 | 33 | 0d |  |
| 41 |  | NLP system tested | 5d | 2022-06-23 | 2022-06-29 | 40 | 0d |  |
| 42 |  | NLP system finalized | 5d | 2022-06-30 | 2022-07-07 | 41 | 0d |  |
| 43 | 3.3 | **Created model** | 35d | 2022-07-08 | 2022-08-25 |  | 0d |  |
| 44 |  | Analyze 20 fields | 10d | 2022-07-08 | 2022-07-21 | 42 | 0d |  |
| 45 |  | Get business insight to get column relevance | 3d | 2022-07-22 | 2022-07-26 | 44 | 138d |  |
| 46 |  | Prioritize Fields | 3d | 2022-07-22 | 2022-07-26 | 44 | 0d |  |
| 47 |  | Integrate OCR and NLP systems to the model | 10d | 2022-07-27 | 2022-08-09 | 46 | 0d |  |
| 48 |  | Decide modeling technique | 5d | 2022-08-10 | 2022-08-16 | 47 | 0d |  |
| 49 |  | Try different modeling algorithm | 3d | 2022-08-17 | 2022-08-19 | 48 | 0d |  |
| 50 |  | Compare the right modeling technique | 3d | 2022-08-22 | 2022-08-24 | 49 | 0d |  |
| 51 |  | Select best modeling technique | 1d | 2022-08-25 | 2022-08-25 | 50 | 0d |  |
| 52 | 3.4 | **Trained Model** | 52d | 2022-08-26 | 2022-11-08 |  | 0d |  |
| 53 |  | Train Model - Itteration 1 | 10d | 2022-08-26 | 2022-09-09 | 51 | 0d |  |
| 54 |  | Assess Model with UCONN SMEs | 3d | 2022-09-12 | 2022-09-14 | 53 | 0d |  |
| 55 |  | Train Model - Itteration 2 | 10d | 2022-09-15 | 2022-09-28 | 54 | 0d |  |
| 56 |  | Assess Model with UCONN SMEs | 3d | 2022-09-29 | 2022-10-03 | 55 | 0d |  |
| 57 |  | Train Model - Itteration 3 | 10d | 2022-10-04 | 2022-10-17 | 56 | 0d |  |
| 58 |  | Assess Model with UCONN SMEs | 3d | 2022-10-18 | 2022-10-20 | 57 | 0d |  |
| 59 |  | Train Model - Itteration 4 | 10d | 2022-10-21 | 2022-11-03 | 58 | 0d |  |
| 60 |  | Assess Model with UCONN SMEs | 3d | 2022-11-04 | 2022-11-08 | 59 | 0d |  |
| 61 | 3.5 | **Validated Model** | 6d | 2022-11-09 | 2022-11-16 |  | 0d |  |
| 62 |  | Validation against Training Data - Final | 3d | 2022-11-09 | 2022-11-11 | 60 | 0d |  |
| 63 |  | Test with Holdback data - Final | 3d | 2022-11-14 | 2022-11-16 | 62 | 0d |  |
| 64 | 3.6 | **Tested Model** | 7d | 2022-11-17 | 2022-11-25 |  | 0d |  |
| 65 |  | Finalize testing approach | 2d | 2022-11-17 | 2022-11-18 | 63 | 0d |  |
| 66 |  | Final Tests Completed | 5d | 2022-11-21 | 2022-11-25 | 65 | 0d |  |
| 67 | 3.7 | **Finalized Model** | 7d | 2022-11-28 | 2022-12-06 |  | 0d |  |
| 68 |  | Review Model with COO | 2d | 2022-11-28 | 2022-11-29 | 66 | 0d |  |
| 69 |  | Review Model with CIO | 2d | 2022-11-28 | 2022-11-29 | 66 | 0d |  |
| 70 |  | Review Model with Allan | 1d | 2022-11-28 | 2022-11-28 | 66 | 1d |  |

| ID | WBS | Task | Duration | Start | Finish | Predecessors | Total float |
| --- | --- | --- | --- | --- | --- | --- | --- |
| 71 |  | Implement suggestions | 5d | 2022-11-30 | 2022-12-06 | 68, 69, 70 | 0d |
| 72 | 4 | **Trained Genpact Users** | 27d | 2022-12-07 | 2023-01-20 |  | 0d |
| 73 | 4.1 | **Prepared training sessions** | 10d | 2022-12-07 | 2022-12-20 |  | 0d |
| 74 |  | Create training material | 5d | 2022-12-07 | 2022-12-13 | 71 | 0d |
| 75 |  | Schedule training sessions | 2d | 2022-12-07 | 2022-12-08 | 71 | 3d |
| 76 |  | Reharse training sessions | 5d | 2022-12-14 | 2022-12-20 | 74, 75 | 0d |
| 77 |  | Conducted training sessions | 10d | 2022-12-21 | 2023-01-10 | 76 | 0d |
| 78 | 4.3 | **Evaluated training** | 6d | 2023-01-11 | 2023-01-19 |  | 17d |
| 79 |  | Test staff with exams | 3d | 2023-01-11 | 2023-01-13 | 77 | 17d |
| 80 |  | Review exams | 1d | 2023-01-17 | 2023-01-17 | 79 | 19d |
| 81 |  | Review errors with failing users | 3d | 2023-01-17 | 2023-01-19 | 79 | 17d |
| 82 |  | Training sign-off | 1d | 2023-01-20 | 2023-01-20 | 81, 80 | 17d |
| 83 | 5 | **Integrated Model Workflow** | 24d | 2023-01-11 | 2023-02-14 |  | 0d |
| 84 | 5.1 | **Model Integration** | 16d | 2023-01-11 | 2023-02-02 |  | 0d |
| 85 |  | Meet with UCONNIC IT team | 2d | 2023-01-11 | 2023-01-12 | 77 | 0d |
| 86 |  | Integrate model | 10d | 2023-01-13 | 2023-01-27 | 85 | 0d |
| 87 |  | Validate model performance | 3d | 2023-01-30 | 2023-02-01 | 86 | 0d |
| 88 |  | Model integration sign-off | 1d | 2023-02-02 | 2023-02-02 | 87 | 0d |
| 89 | 5.2 | **Project sign-off** | 8d | 2023-02-03 | 2023-02-14 |  | 0d |
| 90 |  | Model Tested in Stage | 5d | 2023-02-03 | 2023-02-09 | 88 | 0d |
| 91 |  | Model Deployed | 2d | 2023-02-10 | 2023-02-13 | 90 | 0d |
| 92 |  | Final Presentation to UCONNIC CEO | 1d | 2023-02-14 | 2023-02-14 | 91 | 0d |

## Version 2 (saved 2022-03-29, file 12 Gantt Chart_Updated Holidays and Leaves.mpp)

Last finish 2023-02-14 → 2023-02-01 (-13d). Complete tasks 0 → 40.

Changed:

| ID | Task | Start | Finish | Duration | Complete | Total float | Predecessors | Other |
| --- | --- | --- | --- | --- | --- | --- | --- | --- |
| 1 | **Received data** | 2022-04-01 A | 2022-04-26 → 2022-05-02 A (+6d) | 18d → 22d | 0% → 100% |  |  |  |
| 2 | **Signed NDA** | 2022-04-01 A | 2022-04-07 → 2022-04-15 A (+8d) | 5d → 11d | 0% → 100% | 0d → none |  |  |
| 3 | Team Members sign & submit | 2022-04-01 A | 2022-04-04 A |  | 0% → 100% | 0d → none |  |  |
| 4 | Sponsor Approves NDAs | 2022-04-05 A | 2022-04-05 A |  | 0% → 100% | 0d → none |  |  |
| 5 | Data Released to Team | 2022-04-06 → 2022-04-14 A (+8d) | 2022-04-07 → 2022-04-15 A (+8d) |  | 0% → 100% | 0d → none |  | constraint start no earlier than 2022-04-06 → finish no earlier than 2022-04-15 |
| 6 | **Collected Data** | 2022-04-08 → 2022-04-18 A (+10d) | 2022-04-15 → 2022-04-25 A (+10d) |  | 0% → 100% | 0d → none |  |  |
| 7 | Create Extraction Tool | 2022-04-08 → 2022-04-18 A (+10d) | 2022-04-12 → 2022-04-20 A (+8d) |  | 0% → 100% | 212d → none |  |  |
| 8 | Creat Data Depository | 2022-04-08 → 2022-04-18 A (+10d) | 2022-04-11 → 2022-04-19 A (+8d) |  | 0% → 100% | 213d → none |  |  |
| 9 | Sort Released Data | 2022-04-08 → 2022-04-18 A (+10d) | 2022-04-11 → 2022-04-19 A (+8d) |  | 0% → 100% | 0d → none |  |  |
| 10 | Evaluate Data Dictionary | 2022-04-12 → 2022-04-20 A (+8d) | 2022-04-14 → 2022-04-22 A (+8d) |  | 0% → 100% | 0d → none |  |  |
| 11 | Create Data Backup | 2022-04-15 → 2022-04-25 A (+10d) | 2022-04-15 → 2022-04-25 A (+10d) |  | 0% → 100% | 0d → none |  |  |
| 12 | **Created data dictionary** | 2022-04-18 → 2022-04-26 A (+8d) | 2022-04-22 → 2022-05-02 A (+10d) |  | 0% → 100% |  |  |  |
| 13 | Interpret Data | 2022-04-18 → 2022-04-26 A (+8d) | 2022-04-21 → 2022-04-29 A (+8d) |  | 0% → 100% | 0d → none |  |  |
| 14 | Resolve questions with UCONNIC | 2022-04-18 → 2022-04-26 A (+8d) | 2022-04-20 → 2022-04-28 A (+8d) |  | 0% → 100% | 1d → none |  |  |
| 15 | Review Dictionary with Team | 2022-04-22 → 2022-05-02 A (+10d) | 2022-04-22 → 2022-05-02 A (+10d) |  | 0% → 100% | 0d → none |  |  |
| 16 | **Cleaned data** | 2022-04-25 → 2022-05-03 A (+8d) | 2022-06-08 → 2022-06-14 A (+6d) | 33d → 31d | 0% → 100% | 0d → none |  |  |
| 17 | **Pre-processed data** | 2022-04-25 → 2022-05-03 A (+8d) | 2022-05-24 → 2022-06-01 A (+8d) |  | 0% → 100% | 0d → none |  |  |
| 18 | Format Data | 2022-04-25 → 2022-05-03 A (+8d) | 2022-04-27 → 2022-05-05 A (+8d) |  | 0% → 100% | 0d → none |  |  |
| 19 | Review Data Dictionary | 2022-04-28 → 2022-05-06 A (+8d) | 2022-04-29 → 2022-05-09 A (+10d) |  | 0% → 100% | 0d → none |  |  |
| 20 | Clean file for irrelevant data | 2022-05-02 → 2022-05-10 A (+8d) | 2022-05-03 → 2022-05-11 A (+8d) |  | 0% → 100% | 0d → none |  |  |
| 21 | Input missing data | 2022-05-04 → 2022-05-12 A (+8d) | 2022-05-06 → 2022-05-16 A (+10d) |  | 0% → 100% | 0d → none |  |  |
| 22 | Exclude outliers | 2022-05-09 → 2022-05-17 A (+8d) | 2022-05-11 → 2022-05-19 A (+8d) |  | 0% → 100% | 0d → none |  |  |
| 23 | Discussion data questions with UCONNIC | 2022-05-12 → 2022-05-20 A (+8d) | 2022-05-16 → 2022-05-24 A (+8d) |  | 0% → 100% | 0d → none |  |  |
| 24 | Adjust data as necessary | 2022-05-17 → 2022-05-25 A (+8d) | 2022-05-19 → 2022-05-27 A (+8d) |  | 0% → 100% | 0d → none |  |  |
| 25 | Final data review with UCONNIC | 2022-05-20 → 2022-05-30 A (+10d) | 2022-05-24 → 2022-06-01 A (+8d) |  | 0% → 100% | 0d → none |  |  |
| 26 | **Data Transformation** | 2022-05-25 → 2022-06-02 A (+8d) | 2022-05-27 → 2022-06-03 A (+7d) | 3d → 2d | 0% → 100% | 0d → none |  |  |
| 27 | Normalization | 2022-05-25 → 2022-06-02 A (+8d) | 2022-05-26 → 2022-06-03 A (+8d) |  | 0% → 100% | 0d → none |  |  |
| 28 | Make data adjustments | 2022-05-27 → 2022-06-02 A (+6d) | 2022-05-27 → 2022-06-02 A (+6d) |  | 0% → 100% | 0d → none | 27 → 25 |  |
| 29 | **Data Visualization** | 2022-05-30 → 2022-06-03 A (+4d) | 2022-06-08 → 2022-06-14 A (+6d) |  | 0% → 100% | 0d → none |  |  |
| 30 | Data exploration | 2022-05-30 → 2022-06-03 A (+4d) | 2022-06-03 → 2022-06-09 A (+6d) |  | 0% → 100% | 0d → none |  |  |
| 31 | Analyze data with visualization tools | 2022-05-30 → 2022-06-03 A (+4d) | 2022-06-01 → 2022-06-07 A (+6d) |  | 0% → 100% | 2d → none |  |  |
| 32 | Extract key information | 2022-05-30 → 2022-06-03 A (+4d) | 2022-06-01 → 2022-06-07 A (+6d) |  | 0% → 100% | 2d → none |  | was named Extract key infoermation |
| 33 | Consult with UCONNIC | 2022-06-06 → 2022-06-10 A (+4d) | 2022-06-08 → 2022-06-14 A (+6d) |  | 0% → 100% | 0d → none |  |  |
| 34 | **Finished Model** | 2022-06-09 → 2022-06-15 A (+6d) | 2022-12-06 → 2022-11-23 (-13d) | 127d → 114d | 0% → 57% |  |  |  |
| 35 | **Developed optical character recognition system** | 2022-06-09 → 2022-06-15 A (+6d) | 2022-07-01 → 2022-07-08 A (+7d) |  | 0% → 100% | 154d → none |  |  |
| 36 | OCR system created | 2022-06-09 → 2022-06-15 A (+6d) | 2022-06-17 → 2022-06-23 A (+6d) |  | 0% → 100% | 154d → none |  |  |
| 37 | OCR system tested | 2022-06-20 → 2022-06-24 A (+4d) | 2022-06-24 → 2022-06-30 A (+6d) |  | 0% → 100% | 154d → none |  |  |
| 38 | OCR system finalized | 2022-06-27 → 2022-07-01 A (+4d) | 2022-07-01 → 2022-07-08 A (+7d) |  | 0% → 100% | 154d → none |  |  |
| 39 | **Developed natural language processing system** | 2022-06-09 → 2022-06-15 A (+6d) | 2022-07-07 → 2022-07-13 A (+6d) |  | 0% → 100% | 0d → none |  |  |
| 40 | NLP system created | 2022-06-09 → 2022-06-15 A (+6d) | 2022-06-22 → 2022-06-28 A (+6d) |  | 0% → 100% | 0d → none |  |  |
| 41 | NLP system tested | 2022-06-23 → 2022-06-29 A (+6d) | 2022-06-29 → 2022-07-06 A (+7d) |  | 0% → 100% | 0d → none |  |  |
| 42 | NLP system finalized | 2022-06-30 → 2022-07-07 A (+7d) | 2022-07-07 → 2022-07-13 A (+6d) |  | 0% → 100% | 0d → none |  |  |
| 43 | **Created model** | 2022-07-08 → 2022-06-15 A (-23d) | 2022-08-25 → 2022-08-12 A (-13d) | 35d → 42d | 0% → 100% | 0d → none |  |  |
| 44 | Analyze 20 fields | 2022-07-08 → 2022-06-15 A (-23d) | 2022-07-21 → 2022-06-28 A (-23d) |  | 0% → 100% | 0d → none | 42 → 33 |  |
| 45 | Get business insight to get column relevance | 2022-07-22 → 2022-06-15 A (-37d) | 2022-07-26 → 2022-06-17 A (-39d) |  | 0% → 100% | 138d → none | 44 → 33 |  |
| 46 | Prioritize Fields | 2022-07-22 → 2022-06-15 A (-37d) | 2022-07-26 → 2022-06-17 A (-39d) |  | 0% → 100% | 0d → none | 44 → 33 |  |
| 47 | Integrate OCR and NLP systems to the model | 2022-07-27 → 2022-07-14 A (-13d) | 2022-08-09 → 2022-07-27 A (-13d) |  | 0% → 100% | 0d → none | 46 → 38, 42 |  |
| 48 | Decide modeling technique | 2022-08-10 → 2022-07-28 A (-13d) | 2022-08-16 → 2022-08-03 A (-13d) |  | 0% → 100% | 0d → none |  |  |
| 49 | Try different modeling algorithm | 2022-08-17 → 2022-08-04 A (-13d) | 2022-08-19 → 2022-08-08 A (-11d) |  | 0% → 100% | 0d → none |  |  |
| 50 | Compare the right modeling technique | 2022-08-22 → 2022-08-09 A (-13d) | 2022-08-24 → 2022-08-11 A (-13d) |  | 0% → 100% | 0d → none |  |  |
| 51 | Select best modeling technique | 2022-08-25 → 2022-08-12 A (-13d) | 2022-08-25 → 2022-08-12 A (-13d) |  | 0% → 100% | 0d → none |  |  |
| 52 | **Trained Model** | 2022-08-26 → 2022-08-15 A (-11d) | 2022-11-08 → 2022-10-26 (-13d) |  | 0% → 19% |  |  |  |
| 53 | Train Model - Itteration 1 | 2022-08-26 → 2022-08-15 A (-11d) | 2022-09-09 → 2022-08-26 A (-14d) |  | 0% → 100% | 0d → none |  |  |
| 54 | Assess Model with UCONN SMEs | 2022-09-12 → 2022-08-29 (-14d) | 2022-09-14 → 2022-08-31 (-14d) |  |  |  |  |  |
| 55 | Train Model - Itteration 2 | 2022-09-15 → 2022-09-01 (-14d) | 2022-09-28 → 2022-09-15 (-13d) |  |  |  |  |  |
| 56 | Assess Model with UCONN SMEs | 2022-09-29 → 2022-09-16 (-13d) | 2022-10-03 → 2022-09-20 (-13d) |  |  |  |  |  |
| 57 | Train Model - Itteration 3 | 2022-10-04 → 2022-09-21 (-13d) | 2022-10-17 → 2022-10-04 (-13d) |  |  |  |  |  |
| 58 | Assess Model with UCONN SMEs | 2022-10-18 → 2022-10-05 (-13d) | 2022-10-20 → 2022-10-07 (-13d) |  |  |  |  |  |
| 59 | Train Model - Itteration 4 | 2022-10-21 → 2022-10-10 (-11d) | 2022-11-03 → 2022-10-21 (-13d) |  |  |  |  |  |
| 60 | Assess Model with UCONN SMEs | 2022-11-04 → 2022-10-24 (-11d) | 2022-11-08 → 2022-10-26 (-13d) |  |  |  |  |  |
| 61 | **Validated Model** | 2022-11-09 → 2022-10-27 (-13d) | 2022-11-16 → 2022-11-03 (-13d) |  |  |  |  |  |
| 62 | Validation against Training Data - Final | 2022-11-09 → 2022-10-27 (-13d) | 2022-11-11 → 2022-10-31 (-11d) |  |  |  |  |  |
| 63 | Test with Holdback data - Final | 2022-11-14 → 2022-11-01 (-13d) | 2022-11-16 → 2022-11-03 (-13d) |  |  |  |  |  |
| 64 | **Tested Model** | 2022-11-17 → 2022-11-04 (-13d) | 2022-11-25 → 2022-11-14 (-11d) |  |  |  |  |  |
| 65 | Finalize testing approach | 2022-11-17 → 2022-11-04 (-13d) | 2022-11-18 → 2022-11-07 (-11d) |  |  |  |  |  |
| 66 | Final Tests Completed | 2022-11-21 → 2022-11-08 (-13d) | 2022-11-25 → 2022-11-14 (-11d) |  |  |  |  |  |
| 67 | **Finalized Model** | 2022-11-28 → 2022-11-15 (-13d) | 2022-12-06 → 2022-11-23 (-13d) |  |  |  |  |  |
| 68 | Review Model with COO | 2022-11-28 → 2022-11-15 (-13d) | 2022-11-29 → 2022-11-16 (-13d) |  |  |  |  |  |
| 69 | Review Model with CIO | 2022-11-28 → 2022-11-15 (-13d) | 2022-11-29 → 2022-11-16 (-13d) |  |  |  |  |  |
| 70 | Review Model with Allan | 2022-11-28 → 2022-11-15 (-13d) | 2022-11-28 → 2022-11-15 (-13d) |  |  |  |  |  |

| ID | Task | Start | Finish |
| --- | --- | --- | --- |
| 71 | Implement suggestions | 2022-11-30 → 2022-11-17 (-13d) | 2022-12-06 → 2022-11-23 (-13d) |
| 72 | **Trained Genpact Users** | 2022-12-07 → 2022-11-24 (-13d) | 2023-01-20 → 2023-01-06 (-14d) |
| 73 | **Prepared training sessions** | 2022-12-07 → 2022-11-24 (-13d) | 2022-12-20 → 2022-12-07 (-13d) |
| 74 | Create training material | 2022-12-07 → 2022-11-24 (-13d) | 2022-12-13 → 2022-11-30 (-13d) |
| 75 | Schedule training sessions | 2022-12-07 → 2022-11-24 (-13d) | 2022-12-08 → 2022-11-25 (-13d) |
| 76 | Reharse training sessions | 2022-12-14 → 2022-12-01 (-13d) | 2022-12-20 → 2022-12-07 (-13d) |
| 77 | Conducted training sessions | 2022-12-21 → 2022-12-08 (-13d) | 2023-01-10 → 2022-12-21 (-20d) |
| 78 | **Evaluated training** | 2023-01-11 → 2022-12-22 (-20d) | 2023-01-19 → 2023-01-05 (-14d) |
| 79 | Test staff with exams | 2023-01-11 → 2022-12-22 (-20d) | 2023-01-13 → 2023-01-02 (-11d) |
| 80 | Review exams | 2023-01-17 → 2023-01-03 (-14d) | 2023-01-17 → 2023-01-03 (-14d) |
| 81 | Review errors with failing users | 2023-01-17 → 2023-01-03 (-14d) | 2023-01-19 → 2023-01-05 (-14d) |
| 82 | Training sign-off | 2023-01-20 → 2023-01-06 (-14d) | 2023-01-20 → 2023-01-06 (-14d) |
| 83 | **Integrated Model Workflow** | 2023-01-11 → 2022-12-22 (-20d) | 2023-02-14 → 2023-02-01 (-13d) |
| 84 | **Model Integration** | 2023-01-11 → 2022-12-22 (-20d) | 2023-02-02 → 2023-01-20 (-13d) |
| 85 | Meet with UCONNIC IT team | 2023-01-11 → 2022-12-22 (-20d) | 2023-01-12 → 2022-12-23 (-20d) |
| 86 | Integrate model | 2023-01-13 → 2023-01-02 (-11d) | 2023-01-27 → 2023-01-13 (-14d) |
| 87 | Validate model performance | 2023-01-30 → 2023-01-17 (-13d) | 2023-02-01 → 2023-01-19 (-13d) |
| 88 | Model integration sign-off | 2023-02-02 → 2023-01-20 (-13d) | 2023-02-02 → 2023-01-20 (-13d) |
| 89 | **Project sign-off** | 2023-02-03 → 2023-01-23 (-11d) | 2023-02-14 → 2023-02-01 (-13d) |
| 90 | Model Tested in Stage | 2023-02-03 → 2023-01-23 (-11d) | 2023-02-09 → 2023-01-27 (-13d) |
| 91 | Model Deployed | 2023-02-10 → 2023-01-30 (-11d) | 2023-02-13 → 2023-01-31 (-13d) |
| 92 | Final Presentation to UCONNIC CEO | 2023-02-14 → 2023-02-01 (-13d) | 2023-02-14 → 2023-02-01 (-13d) |

## Version 3 (saved 2022-04-12, file 17 Gantt Chart_Updated Holidays and Vacations 2.mpp)

Last finish 2023-02-01 → 2023-02-14 (+13d). Complete tasks 40 → 45.

Changed:

| ID | Task | Start | Finish | Duration | Complete | Total float | Predecessors |
| --- | --- | --- | --- | --- | --- | --- | --- |
| 34 | **Finished Model** |  | 2022-11-23 → 2022-12-08 (+15d) | 114d → 125d | 57% → 80% |  |  |
| 52 | **Trained Model** |  | 2022-10-26 → 2022-11-10 (+15d) | 52d → 63d | 19% → 84% |  |  |
| 53 | Train Model - Itteration 1 |  | 2022-08-26 A → 2022-08-31 A (+5d) | 10d → 13d |  |  |  |
| 54 | Assess Model with UCONN SMEs | 2022-08-29 → 2022-09-01 A (+3d) | 2022-08-31 → 2022-09-06 A (+6d) |  | 0% → 100% | 0d → none |  |
| 55 | Train Model - Itteration 2 | 2022-09-01 → 2022-09-07 A (+6d) | 2022-09-15 → 2022-09-21 A (+6d) | 10d → 11d | 0% → 100% | 0d → none |  |
| 56 | Assess Model with UCONN SMEs | 2022-09-16 → 2022-09-22 A (+6d) | 2022-09-20 → 2022-09-26 A (+6d) |  | 0% → 100% | 0d → none |  |
| 57 | Train Model - Itteration 3 | 2022-09-21 → 2022-10-03 A (+12d) | 2022-10-04 → 2022-10-17 A (+13d) | 10d → 11d | 0% → 100% | 0d → none |  |
| 58 | Assess Model with UCONN SMEs | 2022-10-05 → 2022-10-18 A (+13d) | 2022-10-07 → 2022-10-20 A (+13d) |  | 0% → 100% | 0d → none |  |
| 59 | Train Model - Itteration 4 | 2022-10-10 → 2022-10-21 A (+11d) | 2022-10-21 → 2022-11-08 (+18d) | 10d → 13d | 0% → 45% |  |  |
| 60 | Assess Model with UCONN SMEs | 2022-10-24 → 2022-11-09 (+16d) | 2022-10-26 → 2022-11-10 (+15d) | 3d → 2d |  |  |  |
| 61 | **Validated Model** | 2022-10-27 → 2022-11-11 (+15d) | 2022-11-03 → 2022-11-18 (+15d) |  |  | 0d → none |  |
| 62 | Validation against Training Data - Final | 2022-10-27 → 2022-11-11 (+15d) | 2022-10-31 → 2022-11-15 (+15d) |  |  |  |  |
| 63 | Test with Holdback data - Final | 2022-11-01 → 2022-11-16 (+15d) | 2022-11-03 → 2022-11-18 (+15d) |  |  |  |  |
| 64 | **Tested Model** | 2022-11-04 → 2022-11-21 (+17d) | 2022-11-14 → 2022-11-29 (+15d) |  |  |  |  |
| 65 | Finalize testing approach | 2022-11-04 → 2022-11-21 (+17d) | 2022-11-07 → 2022-11-22 (+15d) |  |  |  |  |
| 66 | Final Tests Completed | 2022-11-08 → 2022-11-23 (+15d) | 2022-11-14 → 2022-11-29 (+15d) |  |  |  |  |
| 67 | **Finalized Model** | 2022-11-15 → 2022-11-30 (+15d) | 2022-11-23 → 2022-12-08 (+15d) |  |  |  |  |
| 68 | Review Model with COO | 2022-11-15 → 2022-11-30 (+15d) | 2022-11-16 → 2022-12-01 (+15d) |  |  |  |  |
| 69 | Review Model with CIO | 2022-11-15 → 2022-11-30 (+15d) | 2022-11-16 → 2022-12-01 (+15d) |  |  |  |  |
| 70 | Review Model with Allan | 2022-11-15 → 2022-11-30 (+15d) | 2022-11-15 → 2022-11-30 (+15d) |  |  |  |  |
| 71 | Implement suggestions | 2022-11-17 → 2022-12-02 (+15d) | 2022-11-23 → 2022-12-08 (+15d) |  |  |  |  |
| 72 | **Trained Genpact Users** | 2022-11-24 → 2022-12-09 (+15d) | 2023-01-06 → 2023-01-24 (+18d) |  |  |  |  |
| 73 | **Prepared training sessions** | 2022-11-24 → 2022-12-09 (+15d) | 2022-12-07 → 2022-12-22 (+15d) |  |  |  |  |
| 74 | Create training material | 2022-11-24 → 2022-12-09 (+15d) | 2022-11-30 → 2022-12-15 (+15d) |  |  |  |  |
| 75 | Schedule training sessions | 2022-11-24 → 2022-12-09 (+15d) | 2022-11-25 → 2022-12-12 (+17d) |  |  |  |  |
| 76 | Reharse training sessions | 2022-12-01 → 2022-12-16 (+15d) | 2022-12-07 → 2022-12-22 (+15d) |  |  |  |  |
| 77 | Conducted training sessions | 2022-12-08 → 2022-12-23 (+15d) | 2022-12-21 → 2023-01-12 (+22d) |  |  |  |  |
| 78 | **Evaluated training** | 2022-12-22 → 2023-01-13 (+22d) | 2023-01-05 → 2023-01-23 (+18d) |  |  | 17d → 15d |  |
| 79 | Test staff with exams | 2022-12-22 → 2023-01-13 (+22d) | 2023-01-02 → 2023-01-18 (+16d) |  |  | 17d → 15d |  |
| 80 | Review exams | 2023-01-03 → 2023-01-19 (+16d) | 2023-01-03 → 2023-01-19 (+16d) |  |  | 19d → 17d |  |
| 81 | Review errors with failing users | 2023-01-03 → 2023-01-19 (+16d) | 2023-01-05 → 2023-01-23 (+18d) |  |  | 17d → 15d |  |
| 82 | Training sign-off | 2023-01-06 → 2023-01-24 (+18d) | 2023-01-06 → 2023-01-24 (+18d) |  |  | 17d → 15d |  |
| 83 | **Integrated Model Workflow** | 2022-12-22 → 2023-01-13 (+22d) | 2023-02-01 → 2023-02-14 (+13d) | 24d → 22d |  |  |  |
| 84 | **Model Integration** | 2022-12-22 → 2023-01-13 (+22d) | 2023-01-20 → 2023-02-02 (+13d) | 16d → 14d |  |  |  |
| 85 | Meet with UCONNIC IT team | 2022-12-22 → 2023-01-13 (+22d) | 2022-12-23 → 2023-01-17 (+25d) |  |  | 0d → 20d |  |
| 86 | Integrate model | 2023-01-02 → 2023-01-13 (+11d) | 2023-01-13 → 2023-01-27 (+14d) |  |  |  | 85 → 77 |
| 87 | Validate model performance | 2023-01-17 → 2023-01-30 (+13d) | 2023-01-19 → 2023-02-01 (+13d) |  |  |  |  |
| 88 | Model integration sign-off | 2023-01-20 → 2023-02-02 (+13d) | 2023-01-20 → 2023-02-02 (+13d) |  |  |  |  |
| 89 | **Project sign-off** | 2023-01-23 → 2023-02-03 (+11d) | 2023-02-01 → 2023-02-14 (+13d) |  |  |  |  |
| 90 | Model Tested in Stage | 2023-01-23 → 2023-02-03 (+11d) | 2023-01-27 → 2023-02-09 (+13d) |  |  |  |  |
| 91 | Model Deployed | 2023-01-30 → 2023-02-10 (+11d) | 2023-01-31 → 2023-02-13 (+13d) |  |  |  |  |
| 92 | Final Presentation to UCONNIC CEO | 2023-02-01 → 2023-02-14 (+13d) | 2023-02-01 → 2023-02-14 (+13d) |  |  |  |  |
